# CBP_P3B

How a schedule from MS Project changed from version to version. A marks actual dates.

## Version 1 (saved 2014-06-09, file CBP_P3B gary.mpp)

| ID | WBS | Task | Duration | Start | Finish | Predecessors | Total float |
| --- | --- | --- | --- | --- | --- | --- | --- |
| 1 | 1 | **Conveyor Belt Project** | 530d | 2010-01-04 | 2012-02-02 |  | 0d |
| 2 | 1.1 | **Hardware** | 440d | 2010-02-08 | 2011-10-28 |  | 0d |
| 3 |  | Hardware specifications | 50d | 2010-02-08 | 2010-04-16 | 24 | 0d |
| 4 |  | Hardware design | 70d | 2010-04-19 | 2010-07-27 | 3 | 0d |
| 5 |  | Hardware documentation | 30d | 2010-07-28 | 2010-09-08 | 4 | 0d |
| 6 |  | Prototypes | 80d | 2010-11-18 | 2011-03-15 | 25 | 50d |
| 7 |  | Order circuit boards | 5d | 2011-06-30 | 2011-07-07 | 26 | 5d |
| 8 |  | Assemble preproduction models | 30d | 2011-09-19 | 2011-10-28 | 7FS+50d | 5d |
| 9 | 1.2 | **Operating system** | 445d | 2010-02-08 | 2011-11-04 |  | 0d |
| 10 |  | Kernel specifications | 20d | 2010-02-08 | 2010-03-05 | 24 | 30d |
| 11 | 1.2.2 | **Drivers** | 310d | 2010-03-08 | 2011-05-24 |  | 0d |
| 12 |  | Disk drivers | 100d | 2010-03-08 | 2010-07-27 | 10 | 30d |
| 13 |  | Serial I/O drivers | 130d | 2010-11-18 | 2011-05-24 | 25 | 0d |
| 14 |  | Memory management | 90d | 2010-03-08 | 2010-07-13 | 10 | 40d |
| 15 |  | Operating system documentation | 25d | 2010-03-29 | 2010-04-30 | 10 | 90d |
| 16 |  | Network interface | 90d | 2011-06-30 | 2011-11-04 | 26 | 0d |
| 17 | 1.3 | **Utilities** | 395d | 2010-03-08 | 2011-09-23 |  | 30d |
| 18 |  | Utilities specifications | 15d | 2010-03-08 | 2010-03-26 | 24 | 35d |
| 19 |  | Routine utilities | 60d | 2010-03-29 | 2010-06-21 | 18 | 55d |
| 20 |  | Complex utilities | 80d | 2010-03-29 | 2010-07-20 | 18 | 35d |
| 21 |  | Utilities documentation | 20d | 2010-05-03 | 2010-05-28 | 18 | 70d |
| 22 |  | Shell | 60d | 2011-06-30 | 2011-09-23 | 26 | 30d |
| 23 | 1.4 | **System integration** | 530d | 2010-01-04 | 2012-02-02 |  | 0d |
| 24 |  | Architectural decisions | 25d | 2010-01-04 | 2010-02-05 |  | 0d |
| 25 |  | Integration first phase | 50d | 2010-09-09 | 2010-11-17 | 5, 12, 14, 15, 19, 20, 21 | 0d |
| 26 |  | System hard/software test | 25d | 2011-05-25 | 2011-06-29 | 6, 13 | 0d |
| 27 |  | Project documentation | 50d | 2011-06-30 | 2011-09-09 | 26 | 40d |
| 28 |  | Integration acceptance testing | 60d | 2011-11-07 | 2012-02-02 | 8, 16, 22, 27 | 0d |

## Version 2 (data date 2011-01-01, saved 2026-03-16, file CBP_P3B (1).mpp)

Last finish 2012-02-02 → 2012-02-27 (+25d). Complete tasks 0 → 13.

Changed:

| ID | Task | Start | Finish | Duration | Complete | Total float | Other |
| --- | --- | --- | --- | --- | --- | --- | --- |
| 1 | **Conveyor Belt Project** | 2010-01-04 A | 2012-02-02 → 2012-02-27 (+25d) | 530d → 547d | 0% → 61% |  | baseline start none → 2010-01-04; baseline finish none → 2012-02-02 |
| 2 | **Hardware** | 2010-02-08 A | 2011-10-28 → 2011-11-22 (+25d) | 440d → 457d | 0% → 69% | 0d → 5d | baseline start none → 2010-02-08; baseline finish none → 2011-10-28 |
| 3 | Hardware specifications | 2010-02-08 A | 2010-04-16 → 2010-04-09 A (-7d) | 50d → 45d | 0% → 100% | 0d → none | baseline start none → 2010-02-08; baseline finish none → 2010-04-16 |
| 4 | Hardware design | 2010-04-19 → 2010-04-12 A (-7d) | 2010-07-27 → 2010-07-15 A (-12d) | 70d → 67d | 0% → 100% | 0d → none | baseline start none → 2010-04-19; baseline finish none → 2010-07-27 |
| 5 | Hardware documentation | 2010-07-28 → 2010-07-16 A (-12d) | 2010-09-08 → 2010-08-23 A (-16d) | 30d → 27d | 0% → 100% | 0d → none | baseline start none → 2010-07-28; baseline finish none → 2010-09-08 |
| 6 | Prototypes | 2010-11-18 → 2010-11-03 A (-15d) | 2011-03-15 → 2011-03-03 (-12d) | 80d → 78d | 0% → 44% | 50d → 75d | baseline start none → 2010-11-18; baseline finish none → 2011-03-15 |
| 7 | Order circuit boards | 2011-06-30 → 2011-07-26 (+26d) | 2011-07-07 → 2011-08-01 (+25d) |  |  |  | baseline start none → 2011-06-30; baseline finish none → 2011-07-07 |
| 8 | Assemble preproduction models | 2011-09-19 → 2011-10-12 (+23d) | 2011-10-28 → 2011-11-22 (+25d) |  |  |  | baseline start none → 2011-09-19; baseline finish none → 2011-10-28 |
| 9 | **Operating system** | 2010-02-08 A | 2011-11-04 → 2011-11-30 (+26d) | 445d → 462d | 0% → 58% |  | baseline start none → 2010-02-08; baseline finish none → 2011-11-04 |
| 10 | Kernel specifications | 2010-02-08 A | 2010-03-05 → 2010-03-12 A (+7d) | 20d → 25d | 0% → 100% | 30d → none | baseline start none → 2010-02-08; baseline finish none → 2010-03-05 |
| 11 | **Drivers** | 2010-03-08 → 2010-03-15 A (+7d) | 2011-05-24 → 2011-06-17 (+24d) | 310d → 322d | 0% → 55% |  | baseline start none → 2010-03-08; baseline finish none → 2011-05-24 |
| 12 | Disk drivers | 2010-03-08 → 2010-03-15 A (+7d) | 2010-07-27 → 2010-08-17 A (+21d) | 100d → 110d | 0% → 100% | 30d → none | baseline start none → 2010-03-08; baseline finish none → 2010-07-27 |
| 13 | Serial I/O drivers | 2010-11-18 → 2010-11-03 A (-15d) | 2011-05-24 → 2011-06-17 (+24d) | 130d → 153d | 0% → 22% |  | baseline start none → 2010-11-18; baseline finish none → 2011-05-24 |
| 14 | Memory management | 2010-03-08 → 2010-03-15 A (+7d) | 2010-07-13 → 2010-07-30 A (+17d) | 90d → 98d | 0% → 100% | 40d → none | baseline start none → 2010-03-08; baseline finish none → 2010-07-13 |
| 15 | Operating system documentation | 2010-03-29 → 2010-04-05 A (+7d) | 2010-04-30 → 2010-05-07 A (+7d) |  | 0% → 100% | 90d → none | baseline start none → 2010-03-29; baseline finish none → 2010-04-30 |
| 16 | Network interface | 2011-06-30 → 2011-07-26 (+26d) | 2011-11-04 → 2011-11-30 (+26d) |  |  |  | baseline start none → 2011-06-30; baseline finish none → 2011-11-04 |
| 17 | **Utilities** | 2010-03-08 A | 2011-09-23 → 2011-10-18 (+25d) | 395d → 412d | 0% → 77% |  | baseline start none → 2010-03-08; baseline finish none → 2011-09-23 |
| 18 | Utilities specifications | 2010-03-08 A | 2010-03-26 → 2010-03-29 A (+3d) | 15d → 16d | 0% → 100% | 35d → none | baseline start none → 2010-03-08; baseline finish none → 2010-03-26 |
| 19 | Routine utilities | 2010-03-29 → 2010-03-30 A (+1d) | 2010-06-21 → 2010-06-29 A (+8d) | 60d → 65d | 0% → 100% | 55d → none | baseline start none → 2010-03-29; baseline finish none → 2010-06-21 |
| 20 | Complex utilities | 2010-03-29 → 2010-03-30 A (+1d) | 2010-07-20 → 2010-08-11 A (+22d) | 80d → 95d | 0% → 100% | 35d → none | baseline start none → 2010-03-29; baseline finish none → 2010-07-20 |
| 21 | Utilities documentation | 2010-05-03 → 2010-05-04 A (+1d) | 2010-05-28 → 2010-06-03 A (+6d) | 20d → 22d | 0% → 100% | 70d → none | baseline start none → 2010-05-03; baseline finish none → 2010-05-28 |
| 22 | Shell | 2011-06-30 → 2011-07-26 (+26d) | 2011-09-23 → 2011-10-18 (+25d) |  |  |  | baseline start none → 2011-06-30; baseline finish none → 2011-09-23 |
| 23 | **System integration** | 2010-01-04 A | 2012-02-02 → 2012-02-27 (+25d) | 530d → 547d | 0% → 37% |  | baseline start none → 2010-01-04; baseline finish none → 2012-02-02 |
| 24 | Architectural decisions | 2010-01-04 A | 2010-02-05 A |  | 0% → 100% | 0d → none | baseline start none → 2010-01-04; baseline finish none → 2010-02-05 |
| 25 | Integration first phase | 2010-09-09 → 2010-08-24 A (-16d) | 2010-11-17 → 2010-11-09 A (-8d) | 50d → 55d | 0% → 100% | 0d → none | baseline start none → 2010-09-09; baseline finish none → 2010-11-17 |
| 26 | System hard/software test | 2011-05-25 → 2011-06-20 (+26d) | 2011-06-29 → 2011-07-25 (+26d) |  |  |  | baseline start none → 2011-05-25; baseline finish none → 2011-06-29 |
| 27 | Project documentation | 2011-06-30 → 2011-07-26 (+26d) | 2011-09-09 → 2011-10-04 (+25d) |  |  |  | baseline start none → 2011-06-30; baseline finish none → 2011-09-09 |
| 28 | Integration acceptance testing | 2011-11-07 → 2011-12-01 (+24d) | 2012-02-02 → 2012-02-27 (+25d) |  |  |  | baseline start none → 2011-11-07; baseline finish none → 2012-02-02 |

## Version 3 (data date 2011-01-01, saved 2026-03-17, file CBP_P3B gary new.mpp)

Last finish 2012-02-27 → 2012-02-20 (-7d).

Changed:

| ID | Task | Start | Finish | Duration |
| --- | --- | --- | --- | --- |
| 1 | **Conveyor Belt Project** |  | 2012-02-27 → 2012-02-20 (-7d) | 547d → 542d |
| 2 | **Hardware** |  | 2011-11-22 → 2011-11-15 (-7d) | 457d → 452d |
| 6 | Prototypes |  | 2011-03-03 → 2011-02-24 (-7d) |  |
| 7 | Order circuit boards | 2011-07-26 → 2011-07-19 (-7d) | 2011-08-01 → 2011-07-25 (-7d) |  |
| 8 | Assemble preproduction models | 2011-10-12 → 2011-10-05 (-7d) | 2011-11-22 → 2011-11-15 (-7d) |  |
| 9 | **Operating system** |  | 2011-11-30 → 2011-11-22 (-8d) | 462d → 457d |
| 11 | **Drivers** |  | 2011-06-17 → 2011-06-10 (-7d) | 322d → 317d |
| 13 | Serial I/O drivers |  | 2011-06-17 → 2011-06-10 (-7d) |  |
| 16 | Network interface | 2011-07-26 → 2011-07-19 (-7d) | 2011-11-30 → 2011-11-22 (-8d) |  |
| 17 | **Utilities** |  | 2011-10-18 → 2011-10-11 (-7d) | 412d → 407d |
| 22 | Shell | 2011-07-26 → 2011-07-19 (-7d) | 2011-10-18 → 2011-10-11 (-7d) |  |
| 23 | **System integration** |  | 2012-02-27 → 2012-02-20 (-7d) | 547d → 542d |
| 26 | System hard/software test | 2011-06-20 → 2011-06-13 (-7d) | 2011-07-25 → 2011-07-18 (-7d) |  |
| 27 | Project documentation | 2011-07-26 → 2011-07-19 (-7d) | 2011-10-04 → 2011-09-27 (-7d) |  |
| 28 | Integration acceptance testing | 2011-12-01 → 2011-11-23 (-8d) | 2012-02-27 → 2012-02-20 (-7d) |  |
